# 泗泾单栋计划初稿

Schedule from MS Project, 2025-11-16 to 2026-10-31.
Microsoft

## Calendars

- 标准: Mon-Sun 08:00-12:00, 13:00-17:00. Exceptions (off unless hours are given): 2026-02-12 to 2026-02-22 (春节假期).

## Resources

| Resource |
| --- |
| 按图纸下单 |
| 一级 |
| 钢筋主材 |
| 水电管进场 |
| 混凝土进场 |
| 水电管 |
| 水泥进场 |
| 石膏进场 |
| 木工 |
| 水电工 |
| 钢筋工班组进场 |
| 石膏批量进场 |
| 石膏 |
| 网格布 |
| 腻子批量进场 |
| 龙骨 |
| 预埋件进场 |
| 预埋件进场；目前班组进场 |

## Schedule

| ID | WBS | Task | Type | Duration | Start | Finish | Predecessors | Total slack | Free slack | Constraint | 责任单位 |
| --- | --- | --- | --- | --- | --- | --- | --- | --- | --- | --- | --- |
| 1 | 1 | 土地获取 | milestone | 0d | 2025-12-10 | 2025-12-10 |  | 0d |  | start no earlier than 2025-12-10 | 投资 |
| 2 | 2 | 投资交底及启动会 |  | 1d | 2025-12-10 | 2025-12-11 | 1 | 0d |  |  | 投资 |
| 3 | 3 | 产品定位会 |  | 6d | 2025-12-11 | 2025-12-17 | 2 | 307d |  |  |  |
| 4 | 4 | 方案公示 |  | 1d | 2026-01-15 | 2026-01-16 | 128 | 237d | 0d |  |  |
| 5 | 5 | **方案批复** |  | 26d | 2026-01-16 | 2026-02-11 |  | 251d |  |  |  |
| 6 | 5.1 | **方案线下征询完成** |  | 10d | 2026-01-16 | 2026-01-26 |  | 251d |  |  |  |
| 7 | 5.1.1 | 镇政府征询完成 |  | 5d | 2026-01-16 | 2026-01-21 | 4 | 272d |  |  |  |
| 8 | 5.1.2 | 房管局征询完成 |  | 10d | 2026-01-16 | 2026-01-26 | 4 | 267d |  |  |  |
| 9 | 5.1.3 | 供电局征询 |  | 3d | 2026-01-16 | 2026-01-19 | 4 | 274d |  |  |  |
| 10 | 5.1.4 | 经委征询完成 |  | 10d | 2026-01-16 | 2026-01-26 | 4 | 267d |  |  |  |
| 11 | 5.1.5 | 方案完成线上报审 |  | 3d | 2026-01-16 | 2026-01-19 | 4 | 251d | 0d |  |  |
| 12 | 5.2 | **方案线上审批** |  | 23d | 2026-01-19 | 2026-02-11 |  | 251d |  |  |  |
| 13 | 5.2.1 | 绿化市容局审批完成 |  | 15d | 2026-01-19 | 2026-02-03 | 11 | 259d |  |  |  |
| 14 | 5.2.2 | 交警总队审批完成 |  | 15d | 2026-01-19 | 2026-02-03 | 11 | 251d | 0d |  |  |
| 15 | 5.2.3 | 交通委审批完成 |  | 15d | 2026-01-19 | 2026-02-03 | 11 | 251d | 0d |  |  |
| 16 | 5.2.4 | 抗震审批完成 |  | 10d | 2026-01-19 | 2026-01-29 | 11 | 256d | 5d |  |  |
| 17 | 5.2.5 | 民政审批完成 |  | 10d | 2026-01-19 | 2026-01-29 | 11 | 256d | 5d |  |  |
| 18 | 5.2.6 | 消防审批完成 |  | 10d | 2026-01-19 | 2026-01-29 | 11 | 256d | 5d |  |  |
| 19 | 5.2.7 | 电力审批完成 |  | 15d | 2026-01-19 | 2026-02-03 | 11 | 251d | 0d |  |  |
| 20 | 5.2.8 | 民防审批完成 |  | 15d | 2026-01-19 | 2026-02-03 | 11 | 251d | 0d |  |  |
| 21 | 5.2.9 | 房管审批完成 |  | 15d | 2026-01-19 | 2026-02-03 | 11 | 251d | 0d |  |  |
| 22 | 5.2.10 | 规土局审批（批复流程）完成 |  | 3d | 2026-02-03 | 2026-02-06 | 14, 15, 16, 17, 18, 19, 20, 21 | 251d | 0d |  |  |
| 23 | 5.2.11 | 设计方案批复完成 |  | 5d | 2026-02-06 | 2026-02-11 | 22 | 251d |  |  |  |
| 24 | 6 | **经营方案评审** |  | 22d | 2026-01-16 | 2026-02-07 |  | 255d |  |  |  |
| 25 | 6.1 | 设计指标、配置锁定 |  | 1d | 2026-01-16 | 2026-01-17 | 4 | 268d | 13d |  |  |
| 26 | 6.2 | 目标成本锁定 |  | 14d | 2026-01-16 | 2026-01-30 | 4 | 255d | 0d |  |  |
| 27 | 6.3 | 开盘节奏、批次划分 |  | 14d | 2026-01-16 | 2026-01-30 | 4 | 255d | 0d |  |  |
| 28 | 6.4 | 工程策划初稿-开发周期、分批次 |  | 14d | 2026-01-16 | 2026-01-30 | 4 | 255d | 0d |  |  |
| 29 | 6.5 | 各部分任务书 |  | 14d | 2026-01-16 | 2026-01-30 | 4 | 255d | 0d |  |  |
| 30 | 6.6 | 合约规划锁定 |  | 14d | 2026-01-16 | 2026-01-30 | 4 | 255d | 0d |  |  |
| 31 | 6.7 | 经营方案评审 |  | 1d | 2026-01-30 | 2026-01-31 | 25, 26, 27, 28, 29, 30 | 255d | 0d |  |  |
| 32 | 6.8 | 经营方案评审OA |  | 7d | 2026-01-31 | 2026-02-07 | 31 | 255d |  |  |  |

Notes:
- 9: 容缺沟通

| ID | WBS | Task | Type | Duration | Start | Finish | Predecessors | Total slack | Free slack | Constraint |
| --- | --- | --- | --- | --- | --- | --- | --- | --- | --- | --- |
| 33 | 7 | **公开招投标工作** |  | 145d | 2025-12-10 | 2026-05-15 |  | 87d |  |  |
| 34 | 7.1 | **设计勘察公开招投标** |  | 48d | 2025-12-10 | 2026-01-27 |  | 249d |  |  |
| 35 | 7.1.1 | 1.编制设计招标文件初稿，提交建设单位内部审核流转2.预招标申请及其他前期用印资料，建设单位完成用印并返回给招标代理 |  | 10d | 2025-12-10 | 2025-12-20 | 1 | 249d | 0d |  |
| 36 | 7.1.2 | 1.预招标申请等资料送标办，待标办内部审批完成2.建设单位内部完成设计招标文件流转 |  | 3d | 2025-12-20 | 2025-12-23 | 35 | 249d | 0d |  |
| 37 | 7.1.3 | 发布设计预招标公告 |  | 1d | 2025-12-23 | 2025-12-24 | 36 | 249d | 0d |  |
| 38 | 7.1.4 | 接受网上报名 |  | 6d | 2025-12-24 | 2025-12-30 | 37 | 249d | 0d |  |
| 39 | 7.1.5 | 发补充招标文件（如有）（9点30前） |  | 1d | 2025-12-30 | 2025-12-31 | 38 | 249d | 0d |  |
| 40 | 7.1.6 | 开标（上午10:00时）完成 |  | 15d | 2025-12-31 | 2026-01-15 | 39 | 249d | 0d |  |
| 41 | 7.1.7 | 评标（视会议室预定情况微调）完成 |  | 1d | 2026-01-15 | 2026-01-16 | 40 | 249d | 0d |  |
| 42 | 7.1.8 | 中标候选人公示 |  | 3d | 2026-01-16 | 2026-01-19 | 41 | 266d | 0d |  |
| 43 | 7.1.9 | 完成监管备案 |  | 1d | 2026-01-19 | 2026-01-20 | 42 | 266d | 0d |  |
| 44 | 7.1.10 | 设计合同签约 |  | 7d | 2026-01-20 | 2026-01-27 | 43 | 266d |  |  |
| 45 | 7.2 | **总包公开招投标** |  | 102d | 2026-01-22 | 2026-05-15 |  | 44d |  |  |
| 46 | 7.2.1 | 发布施工招标计划 | milestone | 0d | 2026-01-22 | 2026-01-22 |  | 211d | 0d | start no earlier than 2026-01-22 |
| 47 | 7.2.2 | 招标计划公示完成（满足40天要求） |  | 40d | 2026-01-22 | 2026-03-14 | 46 | 211d | 0d |  |
| 48 | 7.2.3 | 发布资格预审招标公告 |  | 2d | 2026-03-14 | 2026-03-16 | 47 | 211d | 0d |  |
| 49 | 7.2.4 | 网上报名 |  | 3d | 2026-03-16 | 2026-03-19 | 48 | 211d | 0d |  |
| 50 | 7.2.5 | 发资格预审补充文件（如有） |  | 7d | 2026-03-19 | 2026-03-26 | 49 | 211d | 0d |  |
| 51 | 7.2.6 | 资格预审开标 |  | 5d | 2026-03-26 | 2026-03-31 | 50 | 211d | 0d |  |
| 52 | 7.2.7 | 资格预审评标 |  | 3d | 2026-03-31 | 2026-04-03 | 51 | 211d |  |  |
| 53 | 7.2.8 | 图纸算量，下午发补充文件 |  | 25d | 2026-03-18 | 2026-04-12 | 165, 231, 177 | 0d |  |  |
| 54 | 7.2.9 | 发施工招标补充文件（本次无）2点前 | milestone | 0d | 2026-04-12 | 2026-04-12 | 53 | 0d |  |  |
| 55 | 7.2.10 | 施工开标，下午2点开标 |  | 18d | 2026-04-12 | 2026-04-30 | 54 | 0d |  |  |
| 56 | 7.2.11 | 施工评标,发布中标公示 |  | 3d | 2026-04-30 | 2026-05-03 | 55 | 0d |  |  |
| 57 | 7.2.12 | 中标候选人公示 |  | 3d | 2026-05-03 | 2026-05-06 | 56 | 0d |  |  |
| 58 | 7.2.13 | 1、完成监管备案2、完善合同，并发布。发布72小时后可以合同备案. |  | 5d | 2026-05-06 | 2026-05-11 | 57 | 0d |  |  |
| 59 | 7.2.14 | 施工合同公示 |  | 3d | 2026-05-11 | 2026-05-14 | 58 | 0d |  |  |
| 60 | 7.2.15 | 施工合同网上备案，履约保函提前开 |  | 1d | 2026-05-14 | 2026-05-15 | 59 | 0d |  |  |

Notes:
- 46: 根据出图时间及定标时间倒推招标计划时间

| ID | WBS | Task | Type | Duration | Start | Finish | Predecessors | Total slack | Free slack | Constraint | Work | 责任单位 |
| --- | --- | --- | --- | --- | --- | --- | --- | --- | --- | --- | --- | --- |
| 61 | 7.3 | **监理公开招投标** |  | 32d | 2026-03-05 | 2026-04-06 |  | 205d |  |  |  |  |
| 62 | 7.3.1 | 发布监理招标公告 | milestone | 0d | 2026-03-05 | 2026-03-05 |  | 205d | 0d | start no earlier than 2026-03-05 |  |  |
| 63 | 7.3.2 | 接受网上报名 |  | 5d | 2026-03-05 | 2026-03-10 | 62 | 205d | 0d |  |  |  |
| 64 | 7.3.3 | 发补充招标文件（如有）（12点前） |  | 4d | 2026-03-10 | 2026-03-14 | 63 | 205d | 0d |  |  |  |
| 65 | 7.3.4 | 开标完成 |  | 15d | 2026-03-14 | 2026-03-29 | 64 | 205d | 0d |  |  |  |
| 66 | 7.3.5 | 评标（视会议室预定情况微调）完成 |  | 2d | 2026-03-29 | 2026-03-31 | 65 | 205d | 0d |  |  |  |
| 67 | 7.3.6 | 中标公示 |  | 3d | 2026-03-31 | 2026-04-03 | 66 | 205d | 0d |  |  |  |
| 68 | 7.3.7 | 完成监管备案 |  | 3d | 2026-04-03 | 2026-04-06 | 67 | 205d | 0d |  |  |  |
| 69 | 7.4 | **IDI公开招投标** |  | 28d | 2026-03-15 | 2026-04-12 |  | 202d |  |  |  |  |
| 70 | 7.4.1 | 发布施工招标计划 | milestone | 0d | 2026-03-15 | 2026-03-15 |  | 202d | 0d | start no earlier than 2026-03-15 |  |  |
| 71 | 7.4.2 | 招标计划公示完成（满足40天要求） |  | 5d | 2026-03-15 | 2026-03-20 | 70 | 202d | 0d |  |  |  |
| 72 | 7.4.3 | 发布资格预审招标公告 |  | 1d | 2026-03-20 | 2026-03-21 | 71 | 202d | 0d |  |  |  |
| 73 | 7.4.4 | 网上报名 |  | 15d | 2026-03-21 | 2026-04-05 | 72 | 202d | 0d |  |  |  |
| 74 | 7.4.5 | 发资格预审补充文件（如有） |  | 1d | 2026-04-05 | 2026-04-06 | 73 | 202d | 0d |  |  |  |
| 75 | 7.4.6 | 资格预审开标完成 |  | 3d | 2026-04-06 | 2026-04-09 | 74 | 202d | 0d |  |  |  |
| 76 | 7.4.7 | 资格预审评标完成 |  | 3d | 2026-04-09 | 2026-04-12 | 75 | 202d |  |  |  |  |
| 77 | 8 | **设计工作** |  | 112d | 2025-11-16 | 2026-03-18 |  |  |  |  | 8h |  |
| 78 | 8.1 | **方案阶段** |  | 91d | 2025-11-16 | 2026-02-26 |  | 25d |  |  |  |  |
| 79 | 8.1.1 | **建筑方案** |  | 65d | 2025-11-16 | 2026-01-20 |  | 25d |  |  |  |  |
| 80 | 8.1.1.1 | 建筑方案单位确定 |  | 3d | 2025-12-11 | 2025-12-14 | 2 | 310d |  |  |  | 设计，招采 |
| 81 | 8.1.1.2 | 产品策划成果确认（物业类型及户型配比） |  | 7d | 2025-12-11 | 2025-12-18 | 2 | 0d |  |  |  | 设计,营销 |
| 82 | 8.1.1.3 | 建筑任务书编写完成 |  | 2d | 2025-12-18 | 2025-12-20 | 81 | 0d |  |  |  | 设计 |
| 83 | 8.1.1.4 | 建筑方案及施工图设计资源选取及合同OA审批完成 |  | 3d | 2025-11-16 | 2025-11-19 |  | 335d |  |  |  | 设计 |
| 84 | 8.1.1.5 | 第一轮：确定规划总图初稿、户型选择及分布 |  | 10d | 2025-12-20 | 2025-12-30 | 82 | 232d | 0d |  |  | 设计 |
| 85 | 8.1.1.6 | 第二轮：总图方案确定、户型深化设计、立面方向 |  | 7d | 2025-12-30 | 2026-01-06 | 84 | 237d | 0d |  |  | 设计 |
| 86 | 8.1.1.7 | 第三轮：总图、户型、立面SKE模型汇报及确定 |  | 7d | 2026-01-06 | 2026-01-13 | 85 | 237d | 0d |  |  | 设计 |
| 87 | 8.1.1.8 | 第四轮：总图、户型、立面SKE模型汇报及确定 |  | 7d | 2026-01-09 | 2026-01-16 | 126 | 0d |  |  |  | 设计 |
| 88 | 8.1.1.9 | 建筑提资至景观进行概念方案设计、提资室内户型优化完成 |  | 3d | 2026-01-16 | 2026-01-19 | 87 | 257d | 0d |  |  | 设计 |
| 89 | 8.1.1.10 | 产品配置标准及成本目标确定 |  | 14d | 2026-01-06 | 2026-01-20 | 85 | 273d |  |  |  | 设计,成本 |

Notes:
- 62: 根据出图时间及定标时间倒推招标计划时间
- 70: 根据出图时间及定标时间倒推招标计划时间

| ID | WBS | Task | Duration | Start | Finish | Predecessors | Total slack | Free slack | Resources | Work | 责任单位 |
| --- | --- | --- | --- | --- | --- | --- | --- | --- | --- | --- | --- |
| 90 | 8.1.2 | **精装方案** | 44d | 2025-12-18 | 2026-01-31 |  | 260d |  |  |  |  |
| 91 | 8.1.2.1 | 室内设计任务书确定（定档，风格及配置） | 3d | 2025-12-18 | 2025-12-21 | 81 | 260d | 0d |  |  |  |
| 92 | 8.1.2.2 | 室内设计单位比选及合同OA审批 | 7d | 2025-12-21 | 2025-12-28 | 91 | 260d | 0d |  |  |  |
| 93 | 8.1.2.3 | 住宅户型配合及平面优化 | 21d | 2025-12-28 | 2026-01-18 | 92 | 275d |  |  |  |  |
| 94 | 8.1.2.4 | 样板房售楼处或精装概念提案（含配置标准确认） | 7d | 2025-12-28 | 2026-01-04 | 92 | 260d | 12d |  |  |  |
| 95 | 8.1.2.5 | 个性样板房售楼处或精装深化方案汇报（平面及效果图） | 15d | 2026-01-16 | 2026-01-31 | 94, 87 | 248d | 0d |  |  |  |
| 96 | 8.1.2.6 | 精装修样板房深化方案汇报（平面及效果图） | 15d | 2026-01-16 | 2026-01-31 | 94, 87 | 248d | 0d |  |  |  |
| 97 | 8.1.3 | **景观方案** | 39d | 2025-12-18 | 2026-01-26 |  | 229d |  |  |  |  |
| 98 | 8.1.3.1 | 景观设计任务书确定 | 2d | 2025-12-18 | 2025-12-20 | 81 | 235d | 0d |  |  |  |
| 99 | 8.1.3.2 | 景观设计单位比选及合同签订 | 7d | 2025-12-20 | 2025-12-27 | 98 | 235d | 3d |  |  |  |
| 100 | 8.1.3.3 | 第一轮：景观全区含示范区概念方案汇报 | 14d | 2025-12-30 | 2026-01-13 | 99, 84 | 232d | 3d |  |  |  |
| 101 | 8.1.3.4 | 第二轮：景观示范区深化方案汇报 | 10d | 2026-01-16 | 2026-01-26 | 100, 87 | 229d | 0d |  |  |  |
| 102 | 8.1.4 | **结构方案** | 33d | 2026-01-13 | 2026-02-26 |  | 237d |  |  |  |  |
| 103 | 8.1.4.1 | 结构方案与布局技术落位汇报 | 2d | 2026-01-13 | 2026-01-15 | 86 | 237d | 0d |  |  |  |
| 104 | 8.1.4.2 | 桩基比选完成 | 7d | 2026-01-15 | 2026-01-22 | 103 | 237d | 0d |  |  |  |
| 105 | 8.1.4.3 | 设计前试桩 | 14d | 2026-01-22 | 2026-02-05 | 104, 84 | 237d | 0d |  |  |  |
| 106 | 8.1.4.4 | 桩基招标清单 | 7d | 2026-01-19 | 2026-01-26 | 42 | 267d |  |  |  | 设计、成本 |
| 107 | 8.1.4.5 | 围护方案初判 | 7d | 2026-01-19 | 2026-01-26 | 42 | 267d |  |  |  |  |
| 108 | 8.1.4.6 | PC技术选型专题汇报（如有） | 10d | 2026-02-05 | 2026-02-26 | 105, 87 | 237d | 0d |  |  |  |
| 109 | 8.1.5 | **机电方案** | 30d | 2025-12-30 | 2026-01-29 |  | 264d |  |  |  |  |
| 110 | 8.1.5.1 | 电梯选型专题汇报 | 7d | 2025-12-30 | 2026-01-06 | 84 | 287d |  |  |  |  |
| 111 | 8.1.5.2 | 智能化方案汇报（第一轮） | 10d | 2025-12-30 | 2026-01-09 | 84 | 264d | 0d |  |  |  |
| 112 | 8.1.5.3 | 智能化方案汇报（第二轮） | 20d | 2026-01-09 | 2026-01-29 | 111 | 264d |  |  |  |  |
| 113 | 8.2 | **扩初设计** | 67d | 2025-12-20 | 2026-03-08 |  | 0d |  |  | 8h |  |
| 114 | 8.2.1 | **建筑扩初设计** | 67d | 2025-12-20 | 2026-03-08 |  | 0d |  |  | 8h |  |
| 115 | 8.2.1.1 | 方案阶段总图日照分析定稿（外部单位计算） | 17d | 2026-01-16 | 2026-02-02 | 87 | 260d |  |  |  |  |
| 116 | 8.2.1.2 | 方案阶段计容面积预测及可售面积预测 | 7d | 2026-01-16 | 2026-01-23 | 87 | 270d |  |  |  |  |
| 117 | 8.2.1.3 | 平面、立面深化、所有单体立面细节推敲 | 14d | 2025-12-30 | 2026-01-13 | 84 | 256d | 0d |  |  |  |
| 118 | 8.2.1.4 | 方案设计提资成果完成及审核,同步提资室内落实点位、景观进行示范区深化设计 | 14d | 2026-01-19 | 2026-02-02 | 88 | 257d | 0d |  |  |  |
| 119 | 8.2.1.5 | PC技术选型专题汇报 | 3d | 2026-02-02 | 2026-02-05 | 118 | 257d |  |  |  |  |
| 120 | 8.2.1.6 | 报规文本初稿完成 | 7d | 2025-12-20 | 2025-12-27 | 82 | 0d |  |  |  |  |
| 121 | 8.2.1.7 | 方案汇报属地政府完成 | 3d | 2025-12-27 | 2025-12-30 | 120 | 294d |  |  |  | 报批，设计 |
| 122 | 8.2.1.8 | 规划预征询完成 | 10d | 2025-12-27 | 2026-01-06 | 120 | 0d |  |  |  | 报批，设计 |
| 123 | 8.2.1.9 | 交通预征询完成 | 10d | 2025-12-27 | 2026-01-06 | 120 | 287d |  |  |  | 报批，设计 |
| 124 | 8.2.1.10 | 交警征询完成 | 10d | 2025-12-27 | 2026-01-06 | 120 | 287d |  |  |  | 报批，设计 |
| 125 | 8.2.1.11 | 环卫预征询完成 | 10d | 2025-12-27 | 2026-01-06 | 120 | 287d |  |  |  | 报批，设计 |
| 126 | 8.2.1.12 | 方案汇报规划局完成 | 3d | 2026-01-06 | 2026-01-09 | 122 | 0d |  |  |  | 报批，设计 |
| 127 | 8.2.1.13 | 报批文本及相关报建成果（方案报建图） | 5d | 2026-01-09 | 2026-01-14 | 126 | 237d | 0d |  |  |  |
| 128 | 8.2.1.14 | 方案公示 | 1d | 2026-01-14 | 2026-01-15 | 127 | 237d | 0d | 一级 | 8h | 报批，设计 |
| 129 | 8.2.1.15 | 第一轮结构布置汇报会（示范区+户型） | 3d | 2026-01-13 | 2026-01-16 | 117 | 259d | 0d |  |  |  |
| 130 | 8.2.1.16 | 第一轮车库汇报会 | 2d | 2026-01-16 | 2026-01-18 | 129 | 259d | 0d |  |  |  |
| 131 | 8.2.1.17 | 首层平面图初稿提资完成 | 7d | 2025-12-27 | 2026-01-03 | 120 | 290d |  |  |  |  |
| 132 | 8.2.1.18 | 报批文本及相关报建成果（方案报建图） | 3d | 2026-01-16 | 2026-01-19 | 87 | 274d |  |  |  |  |
| 133 | 8.2.1.19 | 建筑落实户型点位初稿并反提室内 | 7d | 2026-01-16 | 2026-01-23 | 129 | 270d |  |  |  |  |
| 134 | 8.2.1.20 | 示范区建筑方案深化汇报（南示范区修改完成的方案） | 14d | 2026-01-13 | 2026-01-27 | 117 | 266d |  |  |  |  |
| 135 | 8.2.1.21 | 立面分色汇报及成本优化汇报 | 14d | 2026-01-13 | 2026-01-27 | 117 | 256d | 19d |  |  |  |
| 136 | 8.2.1.22 | 多专业合模方案汇报 | 3d | 2026-02-26 | 2026-03-01 | 135, 96, 101, 108 | 237d | 0d |  |  |  |
| 137 | 8.2.1.23 | 定妆效果图汇报及第一次材料样板汇报 | 7d | 2026-03-01 | 2026-03-08 | 136 | 237d |  |  |  |  |

Notes:
- 106: 本项目不涉及

| ID | WBS | Task | Duration | Start | Finish | Predecessors | Total slack | Free slack |
| --- | --- | --- | --- | --- | --- | --- | --- | --- |
| 138 | 8.2.1.24 | **结构扩初设计** | 18d | 2026-01-16 | 2026-02-03 |  | 259d |  |
| 139 | 8.2.1.24.1 | 终版结构布置汇报 | 7d | 2026-01-16 | 2026-01-23 | 129 | 268d | 0d |
| 140 | 8.2.1.24.2 | 终版地库落地汇报 | 7d | 2026-01-18 | 2026-01-25 | 130 | 259d | 0d |
| 141 | 8.2.1.24.3 | 扩初技术方案评审及设计完成（地上） | 2d | 2026-01-23 | 2026-01-25 | 139 | 268d |  |
| 142 | 8.2.1.24.4 | 扩初技术方案评审及设计完成（地库） | 2d | 2026-01-25 | 2026-01-27 | 140 | 259d | 0d |
| 143 | 8.2.1.24.5 | 结构扩初图完成 | 7d | 2026-01-27 | 2026-02-03 | 142 | 259d |  |
| 144 | 8.2.1.25 | **机电扩初设计** | 21d | 2026-01-16 | 2026-02-06 |  | 240d |  |
| 145 | 8.2.1.25.1 | 精装修点位提资 | 15d | 2026-01-16 | 2026-01-31 | 4 | 240d | 0d |
| 146 | 8.2.1.25.2 | 机电扩初设计 | 6d | 2026-01-31 | 2026-02-06 | 145 | 256d |  |
| 147 | 8.2.2 | **精装修扩初设计** | 14d | 2026-01-31 | 2026-02-25 |  | 248d |  |
| 148 | 8.2.2.1 | 售楼处砌筑水电定稿，提交建筑（点位确认初稿） | 14d | 2026-01-31 | 2026-02-25 | 95 | 248d |  |
| 149 | 8.2.2.2 | 住宅砌筑水电定稿，提交建筑（点位确认定稿） | 14d | 2026-01-31 | 2026-02-25 | 96 | 248d |  |
| 150 | 8.2.3 | **景观扩初设计** | 14d | 2026-01-26 | 2026-02-09 |  | 229d |  |
| 151 | 8.2.3.1 | 示范区景观扩初设计完成及成本测算 | 14d | 2026-01-26 | 2026-02-09 | 101 | 229d | 0d |
| 152 | 8.3 | **施工图阶段** | 111d | 2025-11-16 | 2026-03-18 |  | 61d |  |
| 153 | 8.3.1 | **建筑图** | 108d | 2025-11-16 | 2026-03-15 |  | 61d |  |
| 154 | 8.3.1.1 | 节能计算完成 | 7d | 2026-01-16 | 2026-01-23 | 87 | 253d | 0d |
| 155 | 8.3.1.2 | 保温体系确定 | 4d | 2026-01-23 | 2026-01-27 | 154 | 261d | 0d |
| 156 | 8.3.1.3 | 工程做法表 | 5d | 2026-01-27 | 2026-02-01 | 155 | 261d |  |
| 157 | 8.3.1.4 | PC拆分图完成 | 7d | 2026-01-16 | 2026-01-23 | 87 | 250d | 0d |
| 158 | 8.3.1.5 | PC深化图完成 | 20d | 2026-01-23 | 2026-02-23 | 157 | 250d |  |
| 159 | 8.3.1.6 | 平面图终稿完成 | 10d | 2026-01-16 | 2026-01-26 | 87 | 0d |  |
| 160 | 8.3.1.7 | 建筑平立剖 | 8d | 2026-01-26 | 2026-02-03 | 159 | 0d |  |
| 161 | 8.3.1.8 | 施工图技术评审及审图（第一波内审） | 25d | 2026-01-16 | 2026-02-10 | 87 | 3d | 0d |
| 162 | 8.3.1.9 | 施工图阶段计容面积预测及可售面积预测 | 7d | 2026-02-10 | 2026-02-28 | 161 | 245d |  |
| 163 | 8.3.1.10 | 施工图内部招标、外部送审图完成（含PC拆解图） | 7d | 2026-02-10 | 2026-02-28 | 161 | 245d |  |
| 164 | 8.3.1.11 | 报建施工图完成 | 20d | 2026-02-10 | 2026-03-13 | 161 | 3d | 0d |
| 165 | 8.3.1.12 | 施工图定稿（蓝图签发）（全套施工图）审图合格证 | 2d | 2026-03-13 | 2026-03-15 | 164 | 3d |  |
| 166 | 8.3.1.13 | PC深化图签发完成 | 1d | 2025-11-16 | 2025-11-17 |  | 337d |  |

| ID | WBS | Task | Duration | Start | Finish | Predecessors | Total slack | Free slack | Constraint | 责任单位 |
| --- | --- | --- | --- | --- | --- | --- | --- | --- | --- | --- |
| 167 | 8.3.2 | **结构图** | 50d | 2026-01-16 | 2026-03-18 |  | 18d |  |  |  |
| 168 | 8.3.2.1 | 物探完成 | 5d | 2026-01-16 | 2026-01-21 | 41 | 262d | 9d |  |  |
| 169 | 8.3.2.2 | 初步勘察完成 | 7d | 2026-01-19 | 2026-01-26 | 42 | 267d |  |  |  |
| 170 | 8.3.2.3 | 详细勘察完成 | 14d | 2026-01-16 | 2026-01-30 | 41 | 249d | 0d |  |  |
| 171 | 8.3.2.4 | 桩基施工图完成 | 14d | 2026-01-30 | 2026-02-24 | 170 | 249d |  |  |  |
| 172 | 8.3.2.5 | 围护施工图完成 | 10d | 2026-01-30 | 2026-02-09 | 168, 170 | 253d |  |  |  |
| 173 | 8.3.2.6 | 单体楼栋结构图完成 | 10d | 2026-02-03 | 2026-02-24 | 160 | 0d |  |  |  |
| 174 | 8.3.2.7 | 地库结构图完成 | 10d | 2026-02-03 | 2026-02-24 | 160 | 249d |  |  |  |
| 175 | 8.3.2.8 | 后浇带与现场工程策划耦合 | 10d | 2026-02-24 | 2026-03-06 | 173 | 0d |  |  |  |
| 176 | 8.3.2.9 | 报建施工图完成 | 11d | 2026-03-06 | 2026-03-17 | 175 | 0d |  |  |  |
| 177 | 8.3.2.10 | 施工图定稿（蓝图签发）（全套施工图）审图合格证完成 | 1d | 2026-03-17 | 2026-03-18 | 176 | 0d |  |  |  |
| 178 | 8.3.3 | **机电图** | 37d | 2026-01-27 | 2026-03-16 |  | 229d |  |  |  |
| 179 | 8.3.3.1 | 机电图纸初稿完成 | 7d | 2026-01-31 | 2026-02-07 | 145 | 240d | 0d |  |  |
| 180 | 8.3.3.2 | 给排水图纸初稿完成 | 7d | 2026-01-31 | 2026-02-07 | 145 | 240d | 0d |  |  |
| 181 | 8.3.3.3 | 机电图纸第一版 | 5d | 2026-02-07 | 2026-02-23 | 179 | 240d | 0d |  |  |
| 182 | 8.3.3.4 | 给排水图纸第一版 | 5d | 2026-02-07 | 2026-02-23 | 180 | 240d | 0d |  |  |
| 183 | 8.3.3.5 | 机电图纸第二版 | 10d | 2026-02-23 | 2026-03-05 | 181 | 240d |  |  |  |
| 184 | 8.3.3.6 | 给排水图纸第二版 | 10d | 2026-02-23 | 2026-03-05 | 182 | 240d |  |  |  |
| 185 | 8.3.3.7 | 外立面机电图合模 | 7d | 2026-02-03 | 2026-02-10 | 160 | 252d |  |  |  |
| 186 | 8.3.3.8 | 消防施工图完成 | 21d | 2026-02-03 | 2026-03-07 | 160 | 238d |  |  |  |
| 187 | 8.3.3.9 | 智能化配置提资 | 7d | 2026-02-03 | 2026-02-10 | 160 | 238d | 0d |  |  |
| 188 | 8.3.3.10 | 智能化施工图完成 | 14d | 2026-02-10 | 2026-03-07 | 187 | 238d |  |  |  |
| 189 | 8.3.3.11 | 电力配合设计单位 | 4d | 2026-01-27 | 2026-01-31 |  | 237d | 0d | start no earlier than 2026-01-27 |  |
| 190 | 8.3.3.12 | PK站图纸施工图 | 25d | 2026-01-31 | 2026-03-08 | 189 | 237d |  |  |  |
| 191 | 8.3.3.13 | 空调施工图完成 | 14d | 2026-01-31 | 2026-02-25 | 145 | 248d |  |  |  |
| 192 | 8.3.3.14 | 地暖施工图完成 | 14d | 2026-01-31 | 2026-02-25 | 145 | 248d |  |  |  |
| 193 | 8.3.3.15 | 雨污图纸完成 | 10d | 2026-02-09 | 2026-03-02 | 151 | 229d | 0d |  |  |
| 194 | 8.3.3.16 | 燃气图纸完成 | 7d | 2026-02-09 | 2026-02-27 | 151 | 232d | 3d |  |  |
| 195 | 8.3.3.17 | 室外给水图纸完成 | 7d | 2026-02-09 | 2026-02-27 | 151 | 232d | 3d |  |  |
| 196 | 8.3.3.18 | 电力图纸完成 | 10d | 2026-02-09 | 2026-03-02 | 189, 151 | 229d | 0d |  |  |
| 197 | 8.3.3.19 | 室外综合管网设计初稿完成（设计院） | 14d | 2026-03-02 | 2026-03-16 | 193, 194, 195, 196 | 229d |  |  |  |
| 198 | 8.3.3.20 | 光伏图纸 | 14d | 2026-02-07 | 2026-03-04 | 180 | 241d |  | start no earlier than 2026-01-29 | 光伏单位 |
| 199 | 8.3.3.21 | 充电桩图纸完成 | 14d | 2026-02-07 | 2026-03-04 | 180 | 241d |  |  |  |

Notes:
- 185: 期间两次会议
- 190: 电力配套单位
- 191: 精装修

| ID | WBS | Task | Duration | Start | Finish | Predecessors | Total slack | Free slack |
| --- | --- | --- | --- | --- | --- | --- | --- | --- |
| 200 | 8.3.4 | **外立面深化图** | 40d | 2026-01-16 | 2026-03-08 |  | 237d |  |
| 201 | 8.3.4.1 | 外立面成本耦合优化 | 15d | 2026-01-16 | 2026-01-31 | 4 | 237d | 0d |
| 202 | 8.3.4.2 | 方案单位终版提资 | 5d | 2026-01-31 | 2026-02-05 | 201 | 237d | 0d |
| 203 | 8.3.4.3 | 幕墙关键节点图 | 7d | 2026-02-05 | 2026-02-23 | 202 | 240d | 0d |
| 204 | 8.3.4.4 | 幕墙平立剖初稿 | 7d | 2026-02-23 | 2026-03-02 | 203 | 240d | 0d |
| 205 | 8.3.4.5 | 示范区幕墙施工图 | 20d | 2026-02-05 | 2026-03-08 | 202 | 237d |  |
| 206 | 8.3.4.6 | 幕墙施工图完成 | 3d | 2026-03-02 | 2026-03-05 | 204 | 240d |  |
| 207 | 8.3.4.7 | 涂料施工图完成 | 15d | 2026-02-05 | 2026-03-03 | 202 | 242d |  |
| 208 | 8.3.4.8 | 线条施工图完成 | 15d | 2026-02-05 | 2026-03-03 | 202 | 242d |  |
| 209 | 8.3.4.9 | 门窗选型及配置确定 | 3d | 2026-02-05 | 2026-02-08 | 154, 202 | 240d | 0d |
| 210 | 8.3.4.10 | 门窗施工图完成 | 14d | 2026-02-08 | 2026-03-05 | 209 | 240d |  |
| 211 | 8.3.4.11 | 栏杆选型及配置确定 | 3d | 2026-02-05 | 2026-02-08 | 154, 202 | 240d | 0d |
| 212 | 8.3.4.12 | 栏杆施工图完成 | 14d | 2026-02-08 | 2026-03-05 | 211 | 240d |  |
| 213 | 8.3.4.13 | 单元门提资 | 7d | 2026-02-05 | 2026-02-23 | 202 | 250d |  |
| 214 | 8.3.4.14 | 单元门施工图完成 | 14d | 2026-02-05 | 2026-03-02 | 202 | 243d |  |
| 215 | 8.3.5 | **结构图** | 47d | 2026-01-16 | 2026-03-15 |  | 3d |  |
| 216 | 8.3.5.1 | 物探完成 | 5d | 2026-01-16 | 2026-01-21 | 41 | 262d | 9d |
| 217 | 8.3.5.2 | 初步勘察完成 | 7d | 2026-01-19 | 2026-01-26 | 42 | 267d |  |
| 218 | 8.3.5.3 | 详细勘察完成 | 14d | 2026-01-16 | 2026-01-30 | 41 | 249d | 0d |
| 219 | 8.3.5.4 | 桩基施工图完成 | 14d | 2026-01-30 | 2026-02-24 | 218 | 249d |  |
| 220 | 8.3.5.5 | 围护施工图完成 | 10d | 2026-01-30 | 2026-02-09 | 216, 218 | 253d |  |
| 221 | 8.3.5.6 | 节能计算完成 | 7d | 2026-01-16 | 2026-01-23 | 87 | 261d | 0d |
| 222 | 8.3.5.7 | 保温体系确定 | 4d | 2026-01-23 | 2026-01-27 | 221 | 261d | 0d |
| 223 | 8.3.5.8 | 工程做法表 | 5d | 2026-01-27 | 2026-02-01 | 222 | 261d |  |
| 224 | 8.3.5.9 | PC拆分图完成 | 7d | 2026-01-16 | 2026-01-23 | 87 | 249d | 0d |
| 225 | 8.3.5.10 | PC深化图完成 | 20d | 2026-01-23 | 2026-02-23 | 224 | 249d | 0d |
| 226 | 8.3.5.11 | 首层平面图终稿完成 | 14d | 2026-01-16 | 2026-01-30 | 87 | 263d |  |
| 227 | 8.3.5.12 | 施工图技术评审及审图（第一波内审） | 25d | 2026-01-16 | 2026-02-10 | 87 | 3d | 0d |
| 228 | 8.3.5.13 | 施工图阶段计容面积预测及可售面积预测 | 7d | 2026-02-10 | 2026-02-28 | 227 | 245d |  |
| 229 | 8.3.5.14 | 施工图内部招标、外部送审图完成（含PC拆解图） | 7d | 2026-02-10 | 2026-02-28 | 227 | 245d |  |
| 230 | 8.3.5.15 | 报建施工图完成 | 20d | 2026-02-10 | 2026-03-13 | 227 | 3d | 0d |
| 231 | 8.3.5.16 | 施工图定稿（蓝图签发）（全套施工图）审图合格证 | 2d | 2026-03-13 | 2026-03-15 | 230 | 3d |  |
| 232 | 8.3.5.17 | PC深化图签发完成 | 1d | 2026-02-23 | 2026-02-24 | 225 | 249d |  |
| 233 | 8.3.5.18 | 室外综合管网设计初稿完成（设计院） | 30d | 2026-01-16 | 2026-02-26 | 87 | 232d | 0d |
| 234 | 8.3.5.19 | 室外综合管网设计终稿完成（汇总外部单位图纸） | 15d | 2026-02-26 | 2026-03-13 | 233 | 232d |  |

| ID | WBS | Task | Duration | Start | Finish | Predecessors | Total slack | Free slack | Constraint |
| --- | --- | --- | --- | --- | --- | --- | --- | --- | --- |
| 235 | 9 | **总包内部招标工作** | 51d | 2026-05-03 | 2026-06-23 |  | 59d |  |  |
| 236 | 9.1 | **土方单位确定** | 28d | 2026-05-03 | 2026-05-31 |  | 153d |  |  |
| 237 | 9.1.1 | 单位推荐完成 | 2d | 2026-05-03 | 2026-05-05 | 56 | 177d | 0d |  |
| 238 | 9.1.2 | 单位考察完成 | 1d | 2026-05-05 | 2026-05-06 | 237 | 177d | 0d |  |
| 239 | 9.1.3 | 单位入围完成 | 1d | 2026-05-06 | 2026-05-07 | 238 | 177d |  |  |
| 240 | 9.1.4 | 技术标完成 | 2d | 2026-05-03 | 2026-05-05 | 56 | 179d |  |  |
| 241 | 9.1.5 | 商务标完成 | 7d | 2026-05-03 | 2026-05-10 | 56 | 153d | 0d |  |
| 242 | 9.1.6 | 发标完成 | 1d | 2026-05-10 | 2026-05-11 | 241 | 153d | 0d | finish no earlier than 2025-03-25 |
| 243 | 9.1.7 | 回标完成 | 5d | 2026-05-11 | 2026-05-16 | 242 | 153d | 0d |  |
| 244 | 9.1.8 | 定标完成 | 1d | 2026-05-16 | 2026-05-17 | 243 | 153d | 0d |  |
| 245 | 9.1.9 | 签署合同完成 | 14d | 2026-05-17 | 2026-05-31 | 244 | 153d |  |  |
| 246 | 9.2 | **示范区精装单位确定** | 51d | 2026-05-03 | 2026-06-23 |  | 80d |  |  |
| 247 | 9.2.1 | 单位推荐完成 | 10d | 2026-05-03 | 2026-05-13 | 56 | 167d | 0d |  |
| 248 | 9.2.2 | 单位考察完成 | 2d | 2026-05-13 | 2026-05-15 | 247 | 167d | 0d |  |
| 249 | 9.2.3 | 单位入围完成 | 2d | 2026-05-15 | 2026-05-17 | 248 | 167d |  |  |
| 250 | 9.2.4 | 技术标完成 | 11d | 2026-05-03 | 2026-05-14 | 56 | 170d |  |  |
| 251 | 9.2.5 | 商务标完成 | 30d | 2026-05-03 | 2026-06-02 | 56 | 80d | 0d |  |
| 252 | 9.2.6 | 发标完成 | 1d | 2026-06-02 | 2026-06-03 | 251 | 80d | 0d | finish no earlier than 2025-03-25 |
| 253 | 9.2.7 | 回标完成 | 5d | 2026-06-03 | 2026-06-08 | 252 | 80d | 0d |  |
| 254 | 9.2.8 | 定标完成 | 1d | 2026-06-08 | 2026-06-09 | 253 | 80d | 0d |  |
| 255 | 9.2.9 | 签署合同完成 | 14d | 2026-06-09 | 2026-06-23 | 254 | 130d |  |  |
| 256 | 9.3 | **示范区景观单位确定** | 51d | 2026-05-03 | 2026-06-23 |  | 99d |  |  |
| 257 | 9.3.1 | 单位推荐完成 | 10d | 2026-05-13 | 2026-05-23 | 56FS+10d | 157d | 0d |  |
| 258 | 9.3.2 | 单位考察完成 | 2d | 2026-05-23 | 2026-05-25 | 257 | 157d | 0d |  |
| 259 | 9.3.3 | 单位入围完成 | 2d | 2026-05-25 | 2026-05-27 | 258 | 157d |  |  |
| 260 | 9.3.4 | 技术标完成 | 11d | 2026-05-03 | 2026-05-14 | 56 | 170d |  |  |
| 261 | 9.3.5 | 商务标完成 | 30d | 2026-05-03 | 2026-06-02 | 56 | 99d | 0d |  |
| 262 | 9.3.6 | 发标完成 | 1d | 2026-06-02 | 2026-06-03 | 261 | 99d | 0d | finish no earlier than 2025-03-25 |
| 263 | 9.3.7 | 回标完成 | 5d | 2026-06-03 | 2026-06-08 | 262 | 99d | 0d |  |
| 264 | 9.3.8 | 定标完成 | 1d | 2026-06-08 | 2026-06-09 | 263 | 99d | 0d |  |
| 265 | 9.3.9 | 签署合同完成 | 14d | 2026-06-09 | 2026-06-23 | 264 | 130d |  |  |

| ID | WBS | Task | Duration | Start | Finish | Predecessors | Total slack | Free slack | Constraint |
| --- | --- | --- | --- | --- | --- | --- | --- | --- | --- |
| 266 | 9.4 | **示范区幕墙单位确定** | 51d | 2026-05-03 | 2026-06-23 |  | 59d |  |  |
| 267 | 9.4.1 | 单位推荐完成 | 10d | 2026-05-23 | 2026-06-02 | 56FS+20d | 147d | 0d |  |
| 268 | 9.4.2 | 单位考察完成 | 2d | 2026-06-02 | 2026-06-04 | 267 | 147d | 0d |  |
| 269 | 9.4.3 | 单位入围完成 | 2d | 2026-06-04 | 2026-06-06 | 268 | 147d |  |  |
| 270 | 9.4.4 | 技术标完成 | 11d | 2026-05-03 | 2026-05-14 | 56 | 170d |  |  |
| 271 | 9.4.5 | 商务标完成 | 30d | 2026-05-03 | 2026-06-02 | 56 | 59d | 0d |  |
| 272 | 9.4.6 | 发标完成 | 1d | 2026-06-02 | 2026-06-03 | 271 | 59d | 0d | finish no earlier than 2025-03-25 |
| 273 | 9.4.7 | 回标完成 | 5d | 2026-06-03 | 2026-06-08 | 272 | 59d | 0d |  |
| 274 | 9.4.8 | 定标完成 | 1d | 2026-06-08 | 2026-06-09 | 273 | 59d | 0d |  |
| 275 | 9.4.9 | 签署合同完成 | 14d | 2026-06-09 | 2026-06-23 | 274 | 130d |  |  |
| 276 | 9.5 | **桩基围护单位确定** | 20d | 2026-05-03 | 2026-05-23 |  | 161d |  |  |
| 277 | 9.5.1 | 单位推荐完成 | 2d | 2026-05-03 | 2026-05-05 | 56 | 177d | 0d |  |
| 278 | 9.5.2 | 单位考察完成 | 1d | 2026-05-05 | 2026-05-06 | 277 | 177d | 0d |  |
| 279 | 9.5.3 | 单位入围完成 | 1d | 2026-05-06 | 2026-05-07 | 278 | 177d |  |  |
| 280 | 9.5.4 | 技术标完成 | 2d | 2026-05-03 | 2026-05-05 | 56 | 179d |  |  |
| 281 | 9.5.5 | 商务标完成 | 2d | 2026-05-03 | 2026-05-05 | 56 | 161d | 0d |  |
| 282 | 9.5.6 | 发标完成 | 1d | 2026-05-05 | 2026-05-06 | 281 | 161d | 0d | finish no earlier than 2025-03-25 |
| 283 | 9.5.7 | 回标完成 | 2d | 2026-05-06 | 2026-05-08 | 282 | 161d | 0d |  |
| 284 | 9.5.8 | 定标完成 | 1d | 2026-05-08 | 2026-05-09 | 283 | 161d | 0d |  |
| 285 | 9.5.9 | 签署合同完成 | 14d | 2026-05-09 | 2026-05-23 | 284 | 161d |  |  |
| 286 | 9.6 | **电力单位确定** | 28d | 2026-05-03 | 2026-05-31 |  | 153d |  |  |
| 287 | 9.6.1 | 单位推荐完成 | 2d | 2026-05-03 | 2026-05-05 | 56 | 177d | 0d |  |
| 288 | 9.6.2 | 单位考察完成 | 1d | 2026-05-05 | 2026-05-06 | 287 | 177d | 0d |  |
| 289 | 9.6.3 | 单位入围完成 | 1d | 2026-05-06 | 2026-05-07 | 288 | 177d |  |  |
| 290 | 9.6.4 | 技术标完成 | 2d | 2026-05-03 | 2026-05-05 | 56 | 179d |  |  |
| 291 | 9.6.5 | 商务标完成 | 7d | 2026-05-03 | 2026-05-10 | 56 | 153d | 0d |  |
| 292 | 9.6.6 | 发标完成 | 1d | 2026-05-10 | 2026-05-11 | 291 | 153d | 0d | finish no earlier than 2025-03-25 |
| 293 | 9.6.7 | 回标完成 | 5d | 2026-05-11 | 2026-05-16 | 292 | 153d | 0d |  |
| 294 | 9.6.8 | 定标完成 | 1d | 2026-05-16 | 2026-05-17 | 293 | 153d | 0d |  |
| 295 | 9.6.9 | 签署合同完成 | 14d | 2026-05-17 | 2026-05-31 | 294 | 153d |  |  |

| ID | WBS | Task | Duration | Start | Finish | Predecessors | Total slack | Free slack | Constraint | Work |
| --- | --- | --- | --- | --- | --- | --- | --- | --- | --- | --- |
| 296 | 9.7 | **自来水单位确定** | 28d | 2026-05-03 | 2026-05-31 |  | 153d |  |  |  |
| 297 | 9.7.1 | 单位推荐完成 | 2d | 2026-05-03 | 2026-05-05 | 56 | 177d | 0d |  |  |
| 298 | 9.7.2 | 单位考察完成 | 1d | 2026-05-05 | 2026-05-06 | 297 | 177d | 0d |  |  |
| 299 | 9.7.3 | 单位入围完成 | 1d | 2026-05-06 | 2026-05-07 | 298 | 177d |  |  |  |
| 300 | 9.7.4 | 技术标完成 | 2d | 2026-05-03 | 2026-05-05 | 56 | 179d |  |  |  |
| 301 | 9.7.5 | 商务标完成 | 7d | 2026-05-03 | 2026-05-10 | 56 | 153d | 0d |  |  |
| 302 | 9.7.6 | 发标完成 | 1d | 2026-05-10 | 2026-05-11 | 301 | 153d | 0d | finish no earlier than 2025-03-25 |  |
| 303 | 9.7.7 | 回标完成 | 5d | 2026-05-11 | 2026-05-16 | 302 | 153d | 0d |  |  |
| 304 | 9.7.8 | 定标完成 | 1d | 2026-05-16 | 2026-05-17 | 303 | 153d | 0d |  |  |
| 305 | 9.7.9 | 签署合同完成 | 14d | 2026-05-17 | 2026-05-31 | 304 | 153d |  |  |  |
| 306 | 10 | **工程工作** | 292d | 2025-11-16 | 2026-09-14 |  |  |  |  | 536h |
| 307 | 10.1 | **总包施工准备工作** | 82.12d | 2026-03-12 | 2026-06-02 |  | 151d |  |  |  |
| 308 | 10.1.1 | 生活区施工 | 20d | 2026-05-03 | 2026-05-23 | 56 | 161d |  |  |  |
| 309 | 10.1.2 | 生活区地块土地平整完整 | 2d | 2026-05-03 | 2026-05-05 | 56 | 161d | 0d |  |  |
| 310 | 10.1.3 | 生活区地块石子铺设完成 | 1d | 2026-05-05 | 2026-05-06 | 309 | 161d | 0d |  |  |
| 311 | 10.1.4 | 生活区地块钢筋铺设完成 | 1d | 2026-05-06 | 2026-05-07 | 310 | 161d | 0d |  |  |
| 312 | 10.1.5 | 生活区地块钢筋绑扎完成 | 1d | 2026-05-07 | 2026-05-08 | 311 | 161d | 0d |  |  |
| 313 | 10.1.6 | 生活区地块混凝土浇筑完成 | 10d | 2026-05-08 | 2026-05-18 | 312 | 161d | 0d |  |  |
| 314 | 10.1.7 | 生活区地块集装箱吊装完成 | 3d | 2026-05-18 | 2026-05-21 | 313 | 161d | 0d |  |  |
| 315 | 10.1.8 | 生活区地块通水 | 2d | 2026-05-21 | 2026-05-23 | 314 | 161d |  |  |  |
| 316 | 10.1.9 | 生活区地块通电 | 2d | 2026-05-21 | 2026-05-23 | 314 | 161d |  |  |  |
| 317 | 10.1.10 | PC场及图纸/开模确认 | 30d | 2026-05-03 | 2026-06-02 | 56 | 151d |  |  |  |
| 318 | 10.1.11 | 塔吊基础施工完成 | 3d | 2026-04-06 | 2026-04-09 | 68 | 205d |  |  |  |
| 319 | 10.1.12 | 临水临电布置完成 | 35d | 2026-04-03 | 2026-05-08 | 56FS-30d | 176d |  | finish no earlier than 2026-04-15 |  |
| 320 | 10.1.13 | 冲洗平台设置/重要道路硬化 | 6d | 2026-05-03 | 2026-05-09 | 56 | 175d |  |  |  |
| 321 | 10.1.14 | 围挡完成 | 20d | 2026-03-12 | 2026-03-31 | 56FS-60d | 213.12d |  | finish no earlier than 2026-03-31 |  |
| 322 | 10.1.15 | 材料采购及加工场布置 | 10d | 2026-05-03 | 2026-05-13 | 56 | 171d |  |  |  |

| ID | WBS | Task | Duration | Start | Finish | Predecessors | Total slack | Free slack | Constraint | Resources | Work |
| --- | --- | --- | --- | --- | --- | --- | --- | --- | --- | --- | --- |
| 323 | 10.2 | **精装施工准备工作** | 64d | 2026-06-09 | 2026-08-12 |  | 80d |  |  |  |  |
| 324 | 10.2.1 | 材料选型定样完成 | 30d | 2026-06-09 | 2026-07-09 | 254 | 80d | 0d |  |  |  |
| 325 | 10.2.2 | 图纸二次深化完成 | 30d | 2026-06-09 | 2026-07-09 | 254 | 80d | 0d |  |  |  |
| 326 | 10.2.3 | 材料下单完成 | 4d | 2026-07-09 | 2026-07-13 | 324, 325, 330 | 80d | 0d |  |  |  |
| 327 | 10.2.4 | 材料排产完成 | 30d | 2026-07-13 | 2026-08-12 | 326 | 80d |  | finish no earlier than 2025-05-12 |  |  |
| 328 | 10.3 | **幕墙施工准备工作** | 85d | 2026-06-09 | 2026-09-02 |  | 59d |  |  |  |  |
| 329 | 10.3.1 | 材料定样完成 | 30d | 2026-06-09 | 2026-07-09 | 274 | 114d |  | finish no earlier than 2025-04-02 |  |  |
| 330 | 10.3.2 | 图纸二次深化完成 | 30d | 2026-06-09 | 2026-07-09 | 274 | 59d | 0d |  |  |  |
| 331 | 10.3.3 | 各材料开模完成 | 10d | 2026-07-09 | 2026-07-19 | 330 | 59d | 0d | finish no earlier than 2025-04-02 |  |  |
| 332 | 10.3.4 | 样板墙施工完成 | 45d | 2026-07-19 | 2026-09-02 | 331 | 59d |  | finish no earlier than 2025-04-02 |  |  |
| 333 | 10.3.5 | 部分材料提前下单 | 15d | 2026-07-09 | 2026-07-24 | 330 | 99d |  | finish no earlier than 2025-04-02 |  |  |
| 334 | 10.4 | **景观施工准备工作** | 45d | 2026-06-09 | 2026-07-24 |  | 99d |  |  |  |  |
| 335 | 10.4.1 | 材料定样完成 | 30d | 2026-06-09 | 2026-07-09 | 264 | 114d |  | finish no earlier than 2025-04-02 |  |  |
| 336 | 10.4.2 | 图纸二次深化完成 | 30d | 2026-06-09 | 2026-07-09 | 264 | 99d | 0d |  |  |  |
| 337 | 10.4.3 | 部分材料提前下单 | 15d | 2026-07-09 | 2026-07-24 | 336 | 99d |  |  |  |  |
| 338 | 10.5 | **4#(售楼处)施工计划** | 169d | 2026-05-15 | 2026-10-31 |  | 0d |  |  |  | 536h |
| 339 | 10.5.1 | **基础** | 57d | 2026-05-15 | 2026-07-11 |  | 0d |  |  |  | 288h |
| 340 | 10.5.1.1 | 打桩完成 | 10d | 2026-05-15 | 2026-05-25 | 60 | 0d |  |  | 钢筋主材; 水电管; 水泥进场 | 240h |
| 341 | 10.5.1.2 | 桩基含放线施工(含7号楼南北单元之间地库)完成 | 12d | 2026-05-25 | 2026-06-06 | 340 | 144d | 0d | start no earlier than 2025-04-25 |  |  |
| 342 | 10.5.1.3 | 围护施工完成 | 15d | 2026-05-25 | 2026-06-09 | 340 | 0d |  |  |  |  |
| 343 | 10.5.1.4 | 桩基检测(降水及休止期)完成 | 3d | 2026-06-06 | 2026-06-09 | 341 | 144d |  |  |  |  |
| 344 | 10.5.1.5 | 土方开挖完成 | 10d | 2026-06-24 | 2026-07-04 | 342FS+15d | 0d |  |  |  |  |
| 345 | 10.5.1.6 | 清底及底板垫层完成 | 1d | 2026-07-04 | 2026-07-05 | 344 | 0d |  |  |  |  |
| 346 | 10.5.1.7 | 接桩、砖胎膜、防水施工完成 | 2d | 2026-07-05 | 2026-07-07 | 345 | 0d |  |  | 木工; 水电工; 钢筋工班组进场 | 48h |
| 347 | 10.5.1.8 | 承台钢筋绑扎完成 | 2d | 2026-07-07 | 2026-07-09 | 346 | 0d |  |  |  |  |
| 348 | 10.5.1.9 | 底板钢筋绑扎完成 | 1d | 2026-07-09 | 2026-07-10 | 347 | 0d |  |  |  |  |
| 349 | 10.5.1.10 | 桩基验收完成 | 1d | 2026-07-10 | 2026-07-11 | 348 | 0d |  |  |  |  |

| ID | WBS | Task | Duration | Start | Finish | Predecessors | Total slack | Resources | Work |
| --- | --- | --- | --- | --- | --- | --- | --- | --- | --- |
| 350 | 10.5.2 | **地下1层** | 10d | 2026-07-11 | 2026-07-21 |  | 0d |  | 8h |
| 351 | 10.5.2.1 | 施工放线完成 | 1d | 2026-07-11 | 2026-07-12 | 349 | 111d |  |  |
| 352 | 10.5.2.2 | 电渣压力焊完成 | 1d | 2026-07-11 | 2026-07-12 | 349 | 111d |  |  |
| 353 | 10.5.2.3 | 墙柱钢筋绑扎完成 | 2d | 2026-07-11 | 2026-07-13 | 349 | 0d |  |  |
| 354 | 10.5.2.4 | 排架及墙模施工完成 | 3d | 2026-07-13 | 2026-07-16 | 353 | 0d |  |  |
| 355 | 10.5.2.5 | 顶板模板施工完成 | 2d | 2026-07-16 | 2026-07-18 | 354 | 0d |  |  |
| 356 | 10.5.2.6 | 钢筋施工完成 | 1d | 2026-07-18 | 2026-07-19 | 355 | 0d |  |  |
| 357 | 10.5.2.7 | 水电施工完成 | 1d | 2026-07-19 | 2026-07-20 | 356 | 0d |  |  |
| 358 | 10.5.2.8 | 混凝土浇筑完成 | 1d | 2026-07-20 | 2026-07-21 | 357 | 0d | 混凝土进场 | 8h |
| 359 | 10.5.3 | **夹层** | 8d | 2026-07-21 | 2026-07-29 |  | 0d |  | 8h |
| 360 | 10.5.3.1 | 施工放线完成 | 1d | 2026-07-21 | 2026-07-22 | 358 | 101d |  |  |
| 361 | 10.5.3.2 | 电渣压力焊完成 | 1d | 2026-07-21 | 2026-07-22 | 358 | 101d |  |  |
| 362 | 10.5.3.3 | 墙柱钢筋绑扎完成 | 1d | 2026-07-21 | 2026-07-22 | 358 | 0d |  |  |
| 363 | 10.5.3.4 | 排架及墙模施工完成 | 2d | 2026-07-22 | 2026-07-24 | 362 | 0d |  |  |
| 364 | 10.5.3.5 | 顶板模板施工完成 | 2d | 2026-07-24 | 2026-07-26 | 363 | 0d |  |  |
| 365 | 10.5.3.6 | 钢筋施工完成 | 1d | 2026-07-26 | 2026-07-27 | 364 | 0d |  |  |
| 366 | 10.5.3.7 | 水电施工完成 | 1d | 2026-07-27 | 2026-07-28 | 365 | 0d |  |  |
| 367 | 10.5.3.8 | 混凝土浇筑完成 | 1d | 2026-07-28 | 2026-07-29 | 366 | 0d | 混凝土进场 | 8h |
| 368 | 10.5.4 | **一层结构及二结构** | 40d | 2026-07-29 | 2026-09-07 |  | 0d |  | 32h |
| 369 | 10.5.4.1 | 施工放线完成 | 1d | 2026-07-29 | 2026-07-30 | 367 | 93d |  |  |
| 370 | 10.5.4.2 | 电渣压力焊完成 | 1d | 2026-07-29 | 2026-07-30 | 367 | 93d |  |  |
| 371 | 10.5.4.3 | 墙柱钢筋绑扎完成 | 1d | 2026-07-29 | 2026-07-30 | 367 | 0d |  |  |
| 372 | 10.5.4.4 | 排架及墙模施工完成 | 2d | 2026-07-30 | 2026-08-01 | 371 | 0d |  |  |
| 373 | 10.5.4.5 | 顶板模板施工完成 | 1d | 2026-08-01 | 2026-08-02 | 372 | 0d |  |  |
| 374 | 10.5.4.6 | 钢筋施工完成 | 1d | 2026-08-02 | 2026-08-03 | 373 | 0d |  |  |
| 375 | 10.5.4.7 | 水电施工完成 | 1d | 2026-08-03 | 2026-08-04 | 374 | 0d |  |  |
| 376 | 10.5.4.8 | 混凝土浇筑完成 | 1d | 2026-08-04 | 2026-08-05 | 375 | 0d | 混凝土进场 | 8h |
| 377 | 10.5.4.9 | 模板拆除完成 | 1d | 2026-08-15 | 2026-08-16 | 376FS+10d, 358FS+10d, 367FS+10d | 0d |  |  |
| 378 | 10.5.4.10 | 放线完成 | 1d | 2026-08-16 | 2026-08-17 | 377 | 0d |  |  |
| 379 | 10.5.4.11 | 卫生间反坎凿毛完成 | 1d | 2026-08-17 | 2026-08-18 | 378 | 0d |  |  |
| 380 | 10.5.4.12 | 砌筑完成 | 3d | 2026-08-18 | 2026-08-21 | 379 | 0d |  |  |
| 381 | 10.5.4.13 | 水电管线二次开槽完成 | 3d | 2026-08-21 | 2026-08-24 | 380 | 0d |  |  |
| 382 | 10.5.4.14 | 水电管线排布完成 | 2d | 2026-08-24 | 2026-08-26 | 381 | 0d |  |  |
| 383 | 10.5.4.15 | 水电管线封堵完成 | 1d | 2026-08-26 | 2026-08-27 | 382 | 0d |  |  |
| 384 | 10.5.4.16 | 顶塞填缝完成 | 1d | 2026-08-28 | 2026-08-29 | 380FS+7d | 63d |  |  |
| 385 | 10.5.4.17 | 冲筋完成 | 1d | 2026-08-27 | 2026-08-28 | 383 | 0d | 石膏; 网格布; 腻子批量进场 | 24h |
| 386 | 10.5.4.18 | 内墙抹灰找平完成 | 2d | 2026-08-28 | 2026-08-30 | 385 | 0d |  |  |
| 387 | 10.5.4.19 | 内保温施工完成 | 3d | 2026-08-30 | 2026-09-02 | 386 | 0d |  |  |
| 388 | 10.5.4.20 | 挂网完成 | 2d | 2026-09-02 | 2026-09-04 | 387 | 0d |  |  |
| 389 | 10.5.4.21 | 批腻子完成 | 3d | 2026-09-04 | 2026-09-07 | 388 | 0d |  |  |

| ID | WBS | Task | Duration | Start | Finish | Predecessors | Total slack | Free slack | Resources | Work |
| --- | --- | --- | --- | --- | --- | --- | --- | --- | --- | --- |
| 390 | 10.5.5 | **三层结构及二结构** | 40d | 2026-08-05 | 2026-09-14 |  | 15d |  |  | 8h |
| 391 | 10.5.5.1 | 施工放线完成 | 1d | 2026-08-05 | 2026-08-06 | 376 | 86d |  |  |  |
| 392 | 10.5.5.2 | 电渣压力焊完成 | 1d | 2026-08-05 | 2026-08-06 | 376 | 86d |  |  |  |
| 393 | 10.5.5.3 | 墙柱钢筋绑扎完成 | 1d | 2026-08-05 | 2026-08-06 | 376 | 15d | 0d |  |  |
| 394 | 10.5.5.4 | 排架及墙模施工完成 | 2d | 2026-08-06 | 2026-08-08 | 393 | 15d | 0d |  |  |
| 395 | 10.5.5.5 | 顶板模板施工完成 | 1d | 2026-08-08 | 2026-08-09 | 394 | 15d | 0d |  |  |
| 396 | 10.5.5.6 | 钢筋施工完成 | 1d | 2026-08-09 | 2026-08-10 | 395 | 15d | 0d |  |  |
| 397 | 10.5.5.7 | 水电施工完成 | 1d | 2026-08-10 | 2026-08-11 | 396 | 15d | 0d |  |  |
| 398 | 10.5.5.8 | 混凝土浇筑完成 | 1d | 2026-08-11 | 2026-08-12 | 397 | 15d | 0d | 混凝土进场 | 8h |
| 399 | 10.5.5.9 | 模板拆除完成 | 1d | 2026-08-22 | 2026-08-23 | 398FS+10d, 358FS+10d, 367FS+10d | 15d | 0d |  |  |
| 400 | 10.5.5.10 | 放线完成 | 1d | 2026-08-23 | 2026-08-24 | 399 | 15d | 0d |  |  |
| 401 | 10.5.5.11 | 卫生间反坎凿毛完成 | 1d | 2026-08-24 | 2026-08-25 | 400 | 47d | 0d |  |  |
| 402 | 10.5.5.12 | 砌筑完成 | 3d | 2026-08-25 | 2026-08-28 | 401 | 47d | 0d |  |  |
| 403 | 10.5.5.13 | 水电管线二次开槽完成 | 3d | 2026-08-28 | 2026-08-31 | 402 | 47d | 0d |  |  |
| 404 | 10.5.5.14 | 水电管线排布完成 | 2d | 2026-08-31 | 2026-09-02 | 403 | 47d | 0d |  |  |
| 405 | 10.5.5.15 | 水电管线封堵完成 | 1d | 2026-09-02 | 2026-09-03 | 404 | 47d | 0d |  |  |
| 406 | 10.5.5.16 | 顶塞填缝完成 | 1d | 2026-09-04 | 2026-09-05 | 402FS+7d | 56d |  |  |  |
| 407 | 10.5.5.17 | 冲筋完成 | 1d | 2026-09-03 | 2026-09-04 | 405 | 47d | 0d |  |  |
| 408 | 10.5.5.18 | 内墙抹灰找平完成 | 2d | 2026-09-04 | 2026-09-06 | 407 | 47d | 0d |  |  |
| 409 | 10.5.5.19 | 内保温施工完成 | 3d | 2026-09-06 | 2026-09-09 | 408 | 47d | 0d |  |  |
| 410 | 10.5.5.20 | 挂网完成 | 2d | 2026-09-09 | 2026-09-11 | 409 | 47d | 0d |  |  |
| 411 | 10.5.5.21 | 批腻子完成 | 3d | 2026-09-11 | 2026-09-14 | 410 | 47d |  |  |  |
| 412 | 10.5.6 | **屋面楼梯间** | 33d | 2026-08-12 | 2026-09-14 |  | 47d |  |  |  |
| 413 | 10.5.6.1 | 施工放线完成 | 1d | 2026-08-12 | 2026-08-13 | 398 | 79d |  |  |  |
| 414 | 10.5.6.2 | 电渣压力焊完成 | 1d | 2026-08-12 | 2026-08-13 | 398 | 79d |  |  |  |
| 415 | 10.5.6.3 | 墙柱钢筋绑扎完成 | 1d | 2026-08-12 | 2026-08-13 | 398 | 47d | 0d |  |  |
| 416 | 10.5.6.4 | 排架及墙模施工完成 | 1d | 2026-08-13 | 2026-08-14 | 415 | 47d | 0d |  |  |
| 417 | 10.5.6.5 | 顶板模板施工完成 | 1d | 2026-08-14 | 2026-08-15 | 416 | 47d | 0d |  |  |
| 418 | 10.5.6.6 | 钢筋施工完成 | 1d | 2026-08-15 | 2026-08-16 | 417 | 47d | 0d |  |  |
| 419 | 10.5.6.7 | 水电施工完成 | 1d | 2026-08-16 | 2026-08-17 | 418 | 47d | 0d |  |  |
| 420 | 10.5.6.8 | 混凝土浇筑完成 | 1d | 2026-08-17 | 2026-08-18 | 419 | 47d | 0d |  |  |
| 421 | 10.5.6.9 | 模板拆除完成 | 1d | 2026-08-28 | 2026-08-29 | 420FS+10d, 358FS+10d, 367FS+10d | 47d | 0d |  |  |
| 422 | 10.5.6.10 | 放线完成 | 1d | 2026-08-29 | 2026-08-30 | 421 | 47d | 0d |  |  |
| 423 | 10.5.6.11 | 砌筑完成 | 1d | 2026-08-30 | 2026-08-31 | 422 | 47d | 0d |  |  |
| 424 | 10.5.6.12 | 水电管线二次开槽完成 | 1d | 2026-08-31 | 2026-09-01 | 423 | 47d | 0d |  |  |
| 425 | 10.5.6.13 | 水电管线排布完成 | 1d | 2026-09-01 | 2026-09-02 | 424 | 47d | 0d |  |  |
| 426 | 10.5.6.14 | 水电管线封堵完成 | 1d | 2026-09-02 | 2026-09-03 | 425 | 47d | 0d |  |  |
| 427 | 10.5.6.15 | 顶塞填缝完成 | 1d | 2026-09-07 | 2026-09-08 | 423FS+7d | 53d |  |  |  |
| 428 | 10.5.6.16 | 冲筋完成 | 1d | 2026-09-03 | 2026-09-04 | 426 | 47d | 0d |  |  |
| 429 | 10.5.6.17 | 内墙抹灰找平完成 | 2d | 2026-09-04 | 2026-09-06 | 428 | 47d | 0d |  |  |
| 430 | 10.5.6.18 | 内保温施工完成 | 3d | 2026-09-06 | 2026-09-09 | 429 | 47d | 0d |  |  |
| 431 | 10.5.6.19 | 挂网完成 | 2d | 2026-09-09 | 2026-09-11 | 430 | 47d | 0d |  |  |
| 432 | 10.5.6.20 | 批腻子完成 | 3d | 2026-09-11 | 2026-09-14 | 431 | 47d |  |  |  |

| ID | WBS | Task | Type | Duration | Start | Finish | Predecessors | Total slack | Free slack | Resources | Work |
| --- | --- | --- | --- | --- | --- | --- | --- | --- | --- | --- | --- |
| 433 | 10.5.7 | **屋面施工** |  | 6d | 2026-08-05 | 2026-08-11 |  | 81d |  |  |  |
| 434 | 10.5.7.1 | 屋面清理完成 |  | 1d | 2026-08-05 | 2026-08-06 | 376 | 86d |  |  |  |
| 435 | 10.5.7.2 | 屋面第一道防水完成 |  | 1d | 2026-08-05 | 2026-08-06 | 376 | 86d |  |  |  |
| 436 | 10.5.7.3 | 屋面第二道防水完成 |  | 1d | 2026-08-05 | 2026-08-06 | 376 | 81d | 0d |  |  |
| 437 | 10.5.7.4 | 屋面第三道防水完成 |  | 2d | 2026-08-06 | 2026-08-08 | 436 | 81d | 0d |  |  |
| 438 | 10.5.7.5 | 屋面保温完成 |  | 1d | 2026-08-08 | 2026-08-09 | 437 | 81d | 0d |  |  |
| 439 | 10.5.7.6 | 屋面保护层浇筑完成 |  | 1d | 2026-08-09 | 2026-08-10 | 438 | 81d | 0d |  |  |
| 440 | 10.5.7.7 | 屋面面层处理完成 |  | 1d | 2026-08-10 | 2026-08-11 | 439 | 81d |  |  |  |
| 441 | 10.5.8 | **幕墙工程** |  | 53d | 2026-08-24 | 2026-10-16 |  | 15d |  |  | 192h |
| 442 | 10.5.8.1 | 放线完成 |  | 2d | 2026-08-24 | 2026-08-26 | 400 | 15d | 0d | 龙骨; 预埋件进场；目前班组进场 | 32h |
| 443 | 10.5.8.2 | 预埋板完成 |  | 3d | 2026-08-26 | 2026-08-29 | 442 | 15d | 0d |  |  |
| 444 | 10.5.8.3 | 主龙骨安装完成 |  | 4d | 2026-08-29 | 2026-09-02 | 443 | 15d | 0d |  |  |
| 445 | 10.5.8.4 | 副龙骨安装完成 |  | 7d | 2026-09-03 | 2026-09-10 | 444SS+5d | 15d | 0d |  |  |
| 446 | 10.5.8.5 | 落架完成 |  | 1d | 2026-09-10 | 2026-09-11 | 445 | 15d | 0d |  |  |
| 447 | 10.5.8.6 | 回土+管线施工完成 |  | 7d | 2026-09-11 | 2026-09-18 | 446 | 15d | 0d |  |  |
| 448 | 10.5.8.7 | 材料排产 |  | 20d | 2026-08-26 | 2026-09-15 | 442 | 46d |  | 按图纸下单 | 160h |
| 449 | 10.5.8.8 | 二次搭架子完成 |  | 1d | 2026-09-18 | 2026-09-19 | 447 | 15d | 0d |  |  |
| 450 | 10.5.8.9 | 面层安装完成 |  | 10d | 2026-09-19 | 2026-09-29 | 449 | 15d | 0d |  |  |
| 451 | 10.5.8.10 | 打胶收尾完成 |  | 1d | 2026-09-29 | 2026-09-30 | 450 | 31d |  |  |  |
| 452 | 10.5.8.11 | 二次落架完成 |  | 1d | 2026-09-29 | 2026-09-30 | 450 | 15d | 0d |  |  |
| 453 | 10.5.8.12 | 采光井施工完成 |  | 2d | 2026-09-30 | 2026-10-02 | 452 | 29d |  |  |  |
| 454 | 10.5.8.13 | 景观收尾完成 |  | 14d | 2026-09-30 | 2026-10-14 | 452 | 15d | 0d |  |  |
| 455 | 10.5.8.14 | 保洁完成 |  | 2d | 2026-10-14 | 2026-10-16 | 454 | 15d | 0d |  |  |
| 456 | 10.5.8.15 | 软装布置完成 | milestone | 0d | 2026-10-16 | 2026-10-16 | 455 | 15d |  |  |  |

| ID | WBS | Task | Type | Duration | Start | Finish | Predecessors | Total slack | Free slack |
| --- | --- | --- | --- | --- | --- | --- | --- | --- | --- |
| 457 | 10.5.9 | **精装工程** |  | 54d | 2026-09-07 | 2026-10-31 |  | 0d |  |
| 458 | 10.5.9.1 | 精装工作面移交完成 |  | 2d | 2026-09-07 | 2026-09-09 | 389 | 0d |  |
| 459 | 10.5.9.2 | 平面布置放线完成 |  | 1d | 2026-09-09 | 2026-09-10 | 458 | 0d |  |
| 460 | 10.5.9.3 | 水电点位、空调机电点位放线完成 |  | 1d | 2026-09-10 | 2026-09-11 | 459 | 50d |  |
| 461 | 10.5.9.4 | 水电布管预埋完成 |  | 3d | 2026-09-10 | 2026-09-13 | 459 | 0d |  |
| 462 | 10.5.9.5 | 机电设备安装完成 |  | 4d | 2026-09-13 | 2026-09-17 | 461SS+3d | 44d |  |
| 463 | 10.5.9.6 | 吊顶龙骨基层完成 |  | 6d | 2026-09-13 | 2026-09-19 | 461 | 0d |  |
| 464 | 10.5.9.7 | 吊顶封板完成 |  | 5d | 2026-09-19 | 2026-09-24 | 463 | 28d | 0d |
| 465 | 10.5.9.8 | 湿作业完成 |  | 8d | 2026-09-24 | 2026-10-02 | 464 | 28d | 0d |
| 466 | 10.5.9.9 | 涂料施工完成 |  | 5d | 2026-09-28 | 2026-10-03 | 465FF+1d | 28d |  |
| 467 | 10.5.9.10 | 饰面层下单完成 |  | 1d | 2026-09-19 | 2026-09-20 | 463 | 0d |  |
| 468 | 10.5.9.11 | 饰面层排产完成 |  | 20d | 2026-09-20 | 2026-10-10 | 467 | 0d |  |
| 469 | 10.5.9.12 | 饰面层完成 |  | 14d | 2026-09-30 | 2026-10-14 | 468FF+4d | 0d |  |
| 470 | 10.5.9.13 | 部品安装完成 |  | 3d | 2026-10-14 | 2026-10-17 | 469FF+3d | 0d |  |
| 471 | 10.5.9.14 | 灯具机电安装完成 |  | 2d | 2026-10-17 | 2026-10-19 | 470 | 0d |  |
| 472 | 10.5.9.15 | 保洁移交完成 |  | 2d | 2026-10-19 | 2026-10-21 | 471 | 0d |  |
| 473 | 10.5.9.16 | 软装完成 |  | 3d | 2026-10-21 | 2026-10-24 | 472 | 0d |  |
| 474 | 10.5.9.17 | 示范区开放 | milestone | 0d | 2026-10-31 | 2026-10-31 | 473FS+7d | 0d |  |
